Schedule from MS Project, 2022-04-18 to 2022-06-08, status date 2023-03-12, 6 hours a day, costs in ₽, A marks actual dates.

## Calendars

- Мебель: Mon-Sat 08:00-11:00, 12:00-15:00; Sun off. Exceptions (off unless hours are given): 2022-05-01 to 2022-05-02 (1 мая), 2022-05-09 to 2022-05-10 (9 мая).

## Resources

| Resource | Unit | Rate |
| --- | --- | --- |
| Смирнов К.А. |  | 302.52 |
| Пк и ПО | Маш*ч | 20.15 |
| Расходные материалы |  | 1500 |
| Интернет | д. | 17 |

## Schedule

| ID | WBS | Task | Type | Duration | Start | Finish | Predecessors | Complete | Baseline start | Baseline finish | Baseline duration | Constraint | Resources | Work | Actual work | Cost | Baseline cost | Actual cost | Индикатор |
| --- | --- | --- | --- | --- | --- | --- | --- | --- | --- | --- | --- | --- | --- | --- | --- | --- | --- | --- | --- |
| 1 | 1 | **Автоматизация работы фармацевтической компании** |  | 42d | 2022-04-18 A | 2022-06-08 A |  | 100% | 2022-04-18 | 2022-06-08 | 42d |  |  | 252h | 252h | 82,858.14 | 82,858.14 | 82,858.14 |  |
| 2 | 1.1 | **Планирование** |  | 9d | 2022-04-18 A | 2022-04-27 A |  | 100% | 2022-04-18 | 2022-04-27 | 9d |  |  | 54h | 54h | 18,888.28 | 18,888.28 | 18,888.28 |  |
| 3 | 1.1.1 | Анализ предметной области |  | 1d | 2022-04-18 A | 2022-04-18 A |  | 100% | 2022-04-18 | 2022-04-18 | 1d |  | Смирнов К.А.; Интернет [1 д.]; Пк и ПО [6 Маш*ч]; Расходные материалы | 6h | 6h | 3,453.02 | 3,453.02 | 3,453.02 | 100 |
| 4 | 1.1.2 | Анализ аналогов и прототипов разрабатываемого программного продукта |  | 1d | 2022-04-19 A | 2022-04-19 A | 3 | 100% | 2022-04-19 | 2022-04-19 | 1d |  | Смирнов К.А.; Интернет [1 д.]; Пк и ПО [6 Маш*ч] | 6h | 6h | 1,953.02 | 1,953.02 | 1,953.02 | 100 |
| 5 | 1.1.3 | Разработка брифа, проведение брифинга |  | 2d | 2022-04-20 A | 2022-04-21 A | 4 | 100% | 2022-04-20 | 2022-04-21 | 2d |  | Смирнов К.А.; Пк и ПО [12 Маш*ч] | 12h | 12h | 3,872.04 | 3,872.04 | 3,872.04 | 100 |
| 6 | 1.1.4 | Технико-экономическое обоснование |  | 2d | 2022-04-22 A | 2022-04-23 A | 5 | 100% | 2022-04-22 | 2022-04-23 | 2d |  | Смирнов К.А.; Интернет [0.17 д.]; Пк и ПО [12 Маш*ч] | 12h | 12h | 3,906.04 | 3,906.04 | 3,906.04 | 100 |
| 7 | 1.1.5 | Формирование ТЗ |  | 2d | 2022-04-25 A | 2022-04-26 A | 6 | 100% | 2022-04-25 | 2022-04-26 | 2d |  | Смирнов К.А.; Пк и ПО [12 Маш*ч]; Интернет [1 д.] | 12h | 12h | 3,889.04 | 3,889.04 | 3,889.04 | 100 |
| 8 | 1.1.6 | Заключение договора с заказчиком |  | 1d | 2022-04-27 A | 2022-04-27 A | 7 | 100% | 2022-04-27 | 2022-04-27 | 1d |  | Смирнов К.А. | 6h | 6h | 1,815.12 | 1,815.12 | 1,815.12 | 100 |
| 9 | 1.1.7 | Завершение этапа "Планирование" | milestone | 0d | 2022-04-27 A | 2022-04-27 A | 8 | 100% | 2022-04-27 | 2022-04-27 | 0d |  |  |  |  |  |  |  | 100 |
| 10 | 1.2 | **Проектирование** |  | 9d | 2022-04-28 A | 2022-05-11 A |  | 100% | 2022-04-28 | 2022-05-11 | 9d |  |  | 54h | 54h | 17,475.18 | 17,475.18 | 17,475.18 |  |
| 11 | 1.2.1 | Проектирование интерфейсов |  | 2d | 2022-04-28 A | 2022-04-29 A | 9 | 100% | 2022-04-28 | 2022-04-29 | 2d |  | Смирнов К.А.; Пк и ПО [12 Маш*ч] | 12h | 12h | 3,872.04 | 3,872.04 | 3,872.04 | 100 |
| 12 | 1.2.2 | Проектирование БД |  | 1d | 2022-04-30 A | 2022-04-30 A | 11 | 100% | 2022-04-30 | 2022-04-30 | 1d |  | Смирнов К.А.; Пк и ПО [6 Маш*ч] | 6h | 6h | 1,936.02 | 1,936.02 | 1,936.02 | 100 |
| 13 | 1.2.3 | Разработка макета программного продукта |  | 2d | 2022-05-03 A | 2022-05-04 A | 12 | 100% | 2022-05-03 | 2022-05-04 | 2d | finish no earlier than 2022-05-04 | Смирнов К.А.; Интернет [0.17 д.]; Пк и ПО [12 Маш*ч] | 12h | 12h | 3,906.04 | 3,906.04 | 3,906.04 | 100 |
| 14 | 1.2.4 | Проектирование спецификаций |  | 3d | 2022-05-05 A | 2022-05-07 A | 13 | 100% | 2022-05-05 | 2022-05-07 | 3d |  | Смирнов К.А.; Пк и ПО [18 Маш*ч] | 18h | 18h | 5,808.06 | 5,808.06 | 5,808.06 | 100 |
| 15 | 1.2.5 | Проектирование технологических процессов |  | 1d | 2022-05-11 A | 2022-05-11 A | 14 | 100% | 2022-05-11 | 2022-05-11 | 1d |  | Интернет [0.17 д.]; Смирнов К.А.; Пк и ПО [6 Маш*ч] | 6h | 6h | 1,953.02 | 1,953.02 | 1,953.02 | 100 |
| 16 | 1.3 | **Разработка** |  | 14d | 2022-05-12 A | 2022-05-27 A | 15 | 100% | 2022-05-12 | 2022-05-27 | 14d |  |  | 84h | 84h | 27,325.28 | 27,325.28 | 27,325.28 |  |
| 17 | 1.3.1 | Разработка программной части |  | 4d | 2022-05-12 A | 2022-05-16 A | 15 | 100% | 2022-05-12 | 2022-05-16 | 4d |  | Интернет [0.17 д.]; Смирнов К.А.; Пк и ПО [24 Маш*ч] | 24h | 24h | 7,812.08 | 7,812.08 | 7,812.08 | 100 |
| 18 | 1.3.2 | Настройка системы |  | 2d | 2022-05-17 A | 2022-05-18 A | 17 | 100% | 2022-05-17 | 2022-05-18 | 2d |  | Интернет [0.17 д.]; Смирнов К.А.; Пк и ПО [12 Маш*ч] | 12h | 12h | 3,906.04 | 3,906.04 | 3,906.04 | 100 |
| 19 | 1.3.3 | Реализация БД |  | 3d | 2022-05-19 A | 2022-05-21 A | 18 | 100% | 2022-05-19 | 2022-05-21 | 3d |  | Интернет [0.17 д.]; Смирнов К.А.; Пк и ПО [18 Маш*ч] | 18h | 18h | 5,859.06 | 5,859.06 | 5,859.06 | 100 |
| 20 | 1.3.4 | Разработка пользовательского интерфейса |  | 2d | 2022-05-23 A | 2022-05-24 A | 19 | 100% | 2022-05-23 | 2022-05-24 | 2d |  | Интернет [0.17 д.]; Смирнов К.А.; Пк и ПО [12 Маш*ч] | 12h | 12h | 3,906.04 | 3,906.04 | 3,906.04 | 100 |
| 21 | 1.3.5 | Реализация физической модели |  | 2d | 2022-05-25 A | 2022-05-26 A | 20 | 100% | 2022-05-25 | 2022-05-26 | 2d |  | Смирнов К.А.; Интернет [1 д.]; Пк и ПО [12 Маш*ч] | 12h | 12h | 3,889.04 | 3,889.04 | 3,889.04 | 100 |
| 22 | 1.3.6 | Организация безопасности АИС |  | 1d | 2022-05-27 A | 2022-05-27 A | 21 | 100% | 2022-05-27 | 2022-05-27 | 1d |  | Интернет [0.17 д.]; Смирнов К.А.; Пк и ПО [6 Маш*ч] | 6h | 6h | 1,953.02 | 1,953.02 | 1,953.02 | 100 |
| 23 | 1.4 | **Тестирование** |  | 6d | 2022-05-28 A | 2022-06-03 A | 21 | 100% | 2022-05-28 | 2022-06-03 | 6d |  |  | 36h | 36h | 11,667.12 | 11,667.12 | 11,667.12 |  |
| 24 | 1.4.1 | Разработка сценариев тестирования |  | 1d | 2022-05-28 A | 2022-05-28 A | 22 | 100% | 2022-05-28 | 2022-05-28 | 1d | finish no earlier than 2022-05-28 | Смирнов К.А.; Интернет [0.17 д.]; Пк и ПО [6 Маш*ч] | 6h | 6h | 1,953.02 | 1,953.02 | 1,953.02 | 100 |
| 25 | 1.4.2 | Подготовка тестовых данных |  | 1d | 2022-05-30 A | 2022-05-30 A | 24 | 100% | 2022-05-30 | 2022-05-30 | 1d |  | Смирнов К.А.; Интернет [1 д.]; Пк и ПО [6 Маш*ч] | 6h | 6h | 1,953.02 | 1,953.02 | 1,953.02 | 100 |
| 26 | 1.4.3 | Выполнение тестовых наборов |  | 1d | 2022-05-31 A | 2022-05-31 A |  | 100% | 2022-05-31 | 2022-05-31 | 1d | start no earlier than 2022-05-31 | Пк и ПО [6 Маш*ч]; Смирнов К.А. | 6h | 6h | 1,936.02 | 1,936.02 | 1,936.02 | 100 |
| 27 | 1.4.4 | Создание отчета о выполнении тестовых наборов |  | 1d | 2022-06-01 A | 2022-06-01 A | 25 | 100% | 2022-06-01 | 2022-06-01 | 1d |  | Смирнов К.А.; Пк и ПО [6 Маш*ч] | 6h | 6h | 1,936.02 | 1,936.02 | 1,936.02 | 100 |
| 28 | 1.4.5 | Исправление ошибок |  | 2d | 2022-06-02 A | 2022-06-03 A | 27 | 100% | 2022-06-02 | 2022-06-03 | 2d |  | Смирнов К.А.; Интернет [1 д.]; Пк и ПО [12 Маш*ч] | 12h | 12h | 3,889.04 | 3,889.04 | 3,889.04 | 100 |

| ID | WBS | Task | Type | Duration | Start | Finish | Predecessors | Complete | Baseline start | Baseline finish | Baseline duration | Resources | Work | Actual work | Cost | Baseline cost | Actual cost | Индикатор |
| --- | --- | --- | --- | --- | --- | --- | --- | --- | --- | --- | --- | --- | --- | --- | --- | --- | --- | --- |
| 29 | 1.5 | **Внедрение** |  | 4d | 2022-06-04 A | 2022-06-08 A |  | 100% | 2022-06-04 | 2022-06-08 | 4d |  | 24h | 24h | 7,502.28 | 7,502.28 | 7,502.28 |  |
| 30 | 1.5.1 | Создание руководства пользователя и руководство по технике безопасности |  | 2d | 2022-06-04 A | 2022-06-06 A |  | 100% | 2022-06-04 | 2022-06-06 | 2d | Смирнов К.А.; Пк и ПО [12 Маш*ч] | 12h | 12h | 3,872.04 | 3,872.04 | 3,872.04 | 100 |
| 31 | 1.5.2 | Передача продукта заказчику |  | 1d | 2022-06-07 A | 2022-06-07 A | 30 | 100% | 2022-06-07 | 2022-06-07 | 1d | Смирнов К.А. | 6h | 6h | 1,815.12 | 1,815.12 | 1,815.12 | 100 |
| 32 | 1.5.3 | Подписание акта сдачи-приемки |  | 1d | 2022-06-08 A | 2022-06-08 A | 31 | 100% | 2022-06-08 | 2022-06-08 | 1d | Смирнов К.А. | 6h | 6h | 1,815.12 | 1,815.12 | 1,815.12 | 100 |
| 33 | 1.5.4 | Завершение этапа "Внедрение" | milestone | 0d | 2022-06-08 A | 2022-06-08 A | 32 | 100% | 2022-06-08 | 2022-06-08 | 0d |  |  |  |  |  |  | 100 |
